# 出版社综合管理平台

Schedule from MS Project, 2018-03-02 to 2018-05-31, A marks actual dates.
microsoft

## Calendars

- 标准: Mon-Fri 08:00-12:00, 13:00-17:00; Sat-Sun off.

## Resources

| Resource |
| --- |
| 刘启杨 |
| 吴永福 |
| 陈永 |
| 孙建 |
| 关欣 |
| 申菊蓉 |

## Schedule

| ID | WBS | Task | Type | Duration | Start | Finish | Predecessors | Complete | Remaining | Total slack | Constraint | Resources | Work | Actual work |
| --- | --- | --- | --- | --- | --- | --- | --- | --- | --- | --- | --- | --- | --- | --- |
| 1 | 1 | **出版社综合管理平台开发** |  | 65d | 2018-03-02 A | 2018-05-31 |  | 7% | 60.36d |  |  | 孙建; 吴永福; 刘启杨; 陈永; 申菊蓉; 关欣 | 7904h | 136h |
| 2 | 1.1 | 分析和设计 | manual | 5d | 2018-03-02 A | 2018-03-08 A |  | 100% |  |  |  | 孙建 | 40h | 40h |
| 3 | 1.2 | 数据库设计 | manual | 2d | 2018-03-07 A | 2018-03-08 A |  | 100% |  |  |  | 陈永; 关欣; 孙建; 吴永福 | 64h | 64h |
| 4 | 1.3 | 开发框架搭建 | manual | 4d | 2018-03-02 A | 2018-03-07 A |  | 100% |  |  |  | 吴永福 | 32h | 32h |
| 5 | 1.4 | 系统业务熟悉 |  | 1d? | 2018-03-08 | 2018-03-08 |  |  |  | 60d | start no earlier than 2018-03-08 | 陈永; 关欣; 刘启杨; 申菊蓉; 吴永福 | 40h |  |
| 6 | 1.5 | 系统框架熟悉 |  | 1d? | 2018-03-09 | 2018-03-09 | 3 |  |  | 59d | start no earlier than 2018-03-09 | 陈永; 刘启杨; 吴永福 | 24h |  |
| 7 | 1.6 | **系统业务开发(一期)** |  | 37d | 2018-03-09 | 2018-04-30 |  |  |  |  |  | 陈永; 刘启杨; 吴永福 | 4584h |  |
| 8 | 1.6.1 | **后台开发** |  | 36d? | 2018-03-12 | 2018-04-30 |  |  |  | 0d |  | 陈永; 刘启杨; 吴永福 | 1776h |  |
| 9 | 1.6.1.1 | **系统模块** |  | 3d | 2018-03-12 | 2018-03-14 |  |  |  |  |  |  | 56h |  |
| 10 | 1.6.1.1.1 | 数据类型,数据码表维护 | manual | 1d | 2018-03-12 | 2018-03-12 |  |  |  |  |  | 陈永; 刘启杨 | 16h |  |
| 11 | 1.6.1.1.2 | 项目分类，项目维护 |  | 1d | 2018-03-12 | 2018-03-12 |  |  |  | 58d | start no earlier than 2018-03-12 | 吴永福 | 8h |  |
| 12 | 1.6.1.1.3 | 科目维护 |  | 1d | 2018-03-13 | 2018-03-13 | 10 |  |  | 1d |  | 陈永 | 8h |  |
| 13 | 1.6.1.1.4 | 用户注册 |  | 1d | 2018-03-13 | 2018-03-13 |  |  |  | 57d | start no earlier than 2018-03-13 | 刘启杨 | 8h |  |
| 14 | 1.6.1.1.5 | 短信发送,短信服务记录 | manual | 1d | 2018-03-13 | 2018-03-13 |  |  |  |  |  | 刘启杨 | 8h |  |
| 15 | 1.6.1.1.6 | 用户登录日志,用户登录统计 | manual | 1d | 2018-03-14 | 2018-03-14 |  |  |  |  |  | 陈永 | 8h |  |
| 16 | 1.6.1.2 | **试题管理** |  | 6d | 2018-03-14 | 2018-03-21 |  |  |  |  |  |  | 48h |  |
| 17 | 1.6.1.2.1 | 科目知识点维护 命审题系统中导入 | manual | 2d | 2018-03-14 | 2018-03-15 |  |  |  |  |  | 吴永福 | 16h |  |
| 18 | 1.6.1.2.2 | 试题分类维护 | manual | 1d | 2018-03-16 | 2018-03-16 |  |  |  |  |  | 吴永福 | 8h |  |
| 19 | 1.6.1.2.3 | 试题维护 支持从命审题系统中导入 | manual | 3d | 2018-03-19 | 2018-03-21 |  |  |  |  |  | 吴永福 | 24h |  |
| 20 | 1.6.1.3 | **试卷管理** |  | 5d | 2018-03-14 | 2018-03-20 |  |  |  |  |  |  | 40h |  |
| 21 | 1.6.1.3.1 | 试卷结构维护 | manual | 1d | 2018-03-14 | 2018-03-14 |  |  |  |  |  | 刘启杨 | 8h |  |
| 22 | 1.6.1.3.2 | 试卷维护 | manual | 2d | 2018-03-15 | 2018-03-16 |  |  |  |  |  | 刘启杨 | 16h |  |
| 23 | 1.6.1.3.3 | 组卷 手动组卷 自动组卷 | manual | 2d | 2018-03-19 | 2018-03-20 |  |  |  |  |  | 刘启杨 | 16h |  |
| 24 | 1.6.1.4 | **课程管理** |  | 7d | 2018-03-15 | 2018-03-23 |  |  |  |  |  |  | 56h |  |
| 25 | 1.6.1.4.1 | 主键教师维护 | manual | 1d | 2018-03-15 | 2018-03-15 |  |  |  |  |  | 陈永 | 8h |  |
| 26 | 1.6.1.4.2 | 课程，课程资源维护 | manual | 2d | 2018-03-16 | 2018-03-19 |  |  |  |  |  | 陈永 | 16h |  |
| 27 | 1.6.1.4.3 | 课程章节，课程试题，课程视频维护 | manual | 2d | 2018-03-20 | 2018-03-21 |  |  |  |  |  | 陈永 | 16h |  |
| 28 | 1.6.1.4.4 | 套餐课程，课程评价 | manual | 2d | 2018-03-22 | 2018-03-23 |  |  |  |  |  | 陈永 | 16h |  |

| ID | WBS | Task | Type | Duration | Start | Finish | Resources | Work |
| --- | --- | --- | --- | --- | --- | --- | --- | --- |
| 29 | 1.6.1.5 | **订单管理** |  | 2d | 2018-03-23 | 2018-03-26 |  | 24h |
| 30 | 1.6.1.5.1 | 订单维护 | manual | 2d | 2018-03-22 | 2018-03-23 | 吴永福 | 16h |
| 31 | 1.6.1.5.2 | 销售统计 | manual | 1d | 2018-03-26 | 2018-03-26 | 吴永福 | 8h |
| 32 | 1.6.1.6 | **我的管理** |  | 2d | 2018-03-23 | 2018-03-26 |  | 32h |
| 33 | 1.6.1.6.1 | 课程收藏，收藏试题 | manual | 1d | 2018-03-21 | 2018-03-21 | 刘启杨 | 8h |
| 34 | 1.6.1.6.2 | 我的错题集,我的课程 | manual | 1d | 2018-03-22 | 2018-03-22 | 刘启杨 | 8h |
| 35 | 1.6.1.6.3 | 试卷作答记录 | manual | 2d | 2018-03-23 | 2018-03-26 | 刘启杨 | 16h |
| 36 | 1.6.1.7 | 资讯管理 | manual | 1d | 2018-03-27 | 2018-03-27 | 吴永福 | 8h |
| 37 | 1.6.1.8 | 平台信息 | manual | 1d | 2018-03-26 | 2018-03-26 | 陈永 | 8h |
| 38 | 1.6.1.9 | 帮助中心 | manual | 1d | 2018-03-27 | 2018-03-27 | 陈永 | 8h |
| 39 | 1.6.1.10 | 电子书管理(暂时不做) | manual | 1d? | 2018-03-12 | 2018-03-12 |  |  |
| 40 | 1.6.1.11 | **（前端）PC站开发** |  | 24d | 2018-03-28 | 2018-04-30 | 陈永; 刘启杨; 吴永福 | 632h |
| 41 | 1.6.1.11.1 | 首页开发(包含接口) | manual | 2d | 2018-03-29 | 2018-03-30 | 吴永福 | 16h |
| 42 | 1.6.1.11.2 | 登录页面,注册页面,找回密码(包含接口) | manual | 2d | 2018-03-29 | 2018-03-30 | 刘启杨 | 16h |
| 43 | 1.6.1.11.3 | 课程详细展示页面(包含接口) | manual | 3d | 2018-03-29 | 2018-04-02 | 陈永 | 24h |
| 44 | 1.6.1.11.4 | 课程查询页面(包含接口) | manual | 3d | 2018-03-28 | 2018-03-30 |  |  |
| 45 | 1.6.2 | web API开发(公众号，app) | manual | 24d | 2018-03-28 | 2018-04-30 | 陈永; 刘启杨; 吴永福 | 576h |
| 46 | 1.6.3 | App开发 | manual | 24d | 2018-03-28 | 2018-04-30 | 刘启杨; 吴永福; 陈永 | 576h |
| 47 | 1.6.4 | （前端）微信公众平台开发 | manual | 24d | 2018-03-28 | 2018-04-30 | 刘启杨; 吴永福; 陈永 | 576h |
| 48 | 1.6.5 | 前端页面设计 | manual | 24d | 2018-03-28 | 2018-04-30 | 孙建 | 192h |
